# 3-张曦尧

Schedule from MS Project, 2026-05-11 to 2026-07-03, costs in ¥.

## Calendars

- 标准: Mon-Fri 08:00-12:00, 13:00-17:00; Sat-Sun off.

## Resources

| Resource | Rate |
| --- | --- |
| 张薇 | 112.5 |
| 刘洋 | 106.25 |
| 招商经理 | 81.25 |
| 招展专员 | 56.25 |
| 市场推广专员 | 60 |
| 媒体公关专员 | 68.75 |
| 观众组织专员 | 56.25 |
| 设计总监 | 93.75 |
| 平面设计师 | 62.5 |
| 3D设计师 | 68.75 |
| 展务经理 | 81.25 |
| 搭建施工队长 | 68.75 |
| 木工 | 43.75 |
| 电工 | 47.5 |
| 美工 | 40 |
| 搬运工 | 35 |
| 叉车司机 | 43.75 |
| 现场运营主管 | 75 |
| 安保人员 | 37.5 |
| 志愿者 | 18.75 |
| 注册接待人员 | 37.5 |
| 主持与礼仪 | 62.5 |
| 活动策划专员 | 60 |
| 财务专员 | 68.75 |
| 法务顾问 | 100 |
| 摄影摄像师 | 75 |
| 直播技术员 | 62.5 |
| 保洁人员 | 25 |
| 场馆对接人 |  |
| 展位搭建材料 | 380 |
| 音响灯光设备 | 45000 |
| 宣传印刷品 | 3.5 |
| 展具租赁 | 800 |
| 纪念品 | 45 |
| 餐饮服务 | 120 |
| 绿植花卉 | 80 |

## Schedule

| ID | WBS | Task | Type | Duration | Start | Finish | Predecessors | Total slack | Free slack | Resources | Work | Cost |
| --- | --- | --- | --- | --- | --- | --- | --- | --- | --- | --- | --- | --- |
| 1 | 1 | **项目启动与策划** |  | 10d | 2026-05-11 | 2026-05-22 |  | 30d |  | 张薇 | 472h | 45,290 |
| 2 | 1.1 | 项目启动会 |  | 2d | 2026-05-11 | 2026-05-12 |  | 38d | 6d | 张薇; 刘洋 | 32h | 3,500 |
| 3 | 1.2 | 展会主题与定位策划 |  | 8d | 2026-05-11 | 2026-05-20 | 2FF | 32d | 2d | 刘洋; 活动策划专员 | 128h | 10,640 |
| 4 | 1.3 | 总体方案与预算编制 |  | 10d | 2026-05-11 | 2026-05-22 | 3FF | 30d | 0d | 张薇; 财务专员 | 160h | 14,500 |
| 5 | 1.4 | 方案评审与立项 | milestone | 3d | 2026-05-20 | 2026-05-22 | 4FF | 30d | 0d | 张薇; 刘洋; 法务顾问 | 72h | 7,650 |
| 6 | 2 | **招商招展** |  | 40d | 2026-05-11 | 2026-07-03 |  | 0d |  | 招商经理 | 2064h | 165,700 |
| 7 | 2.1 | 展位规划与价格体系 | milestone | 6d | 2026-05-15 | 2026-05-22 | 5FF | 30d | 5d | 招商经理; 设计总监 | 96h | 8,400 |
| 8 | 2.2 | 招展宣传推广 |  | 15d | 2026-05-11 | 2026-05-29 | 7FF | 25d | 5d | 市场推广专员; 平面设计师 | 240h | 14,700 |
| 9 | 2.3 | 参展商招募与签约 |  | 40d | 2026-05-11 | 2026-07-03 | 8FF | 0d |  | 招商经理; 招展专员; 法务顾问 | 960h | 76,000 |
| 10 | 2.4 | 展位分配与确认 | milestone | 8d | 2026-06-24 | 2026-07-03 | 9FF | 0d |  | 招商经理; 3D设计师 | 128h | 9,600 |
| 11 | 2.5 | 赞助商洽谈 |  | 20d | 2026-05-11 | 2026-06-05 | 8FF | 20d |  | 招商经理; 张薇 | 320h | 31,000 |
| 12 | 3 | **观众组织与宣传** |  | 30d | 2026-05-11 | 2026-06-19 |  | 10d |  | 市场推广专员 | 1840h | 113,640 |
| 13 | 3.1 | 观众邀约方案制定 |  | 5d | 2026-05-18 | 2026-05-22 | 5FF | 30d | 0d | 观众组织专员; 市场推广专员 | 80h | 4,650 |
| 14 | 3.2 | 专业买家邀请 |  | 30d | 2026-05-11 | 2026-06-19 | 13FF | 10d | 0d | 观众组织专员; 招展专员 | 480h | 27,000 |
| 15 | 3.3 | 媒体合作与新闻发布 |  | 15d | 2026-05-11 | 2026-05-29 | 13FF | 25d |  | 媒体公关专员; 张薇 | 240h | 21,750 |
| 16 | 3.4 | 线上报名系统搭建 |  | 8d | 2026-05-13 | 2026-05-22 | 13FF | 30d | 10d | 直播技术员; 注册接待人员 | 128h | 6,400 |
| 17 | 3.5 | 宣传物料设计制作 | milestone | 12d | 2026-05-11 | 2026-05-26 | 13FF | 28d |  | 平面设计师; 美工 | 192h | 9,840 |
| 18 | 3.6 | 观众预登记推广 | milestone | 20d | 2026-05-11 | 2026-06-05 | 16FF | 20d |  | 市场推广专员; 观众组织专员; 媒体公关专员 | 480h | 29,600 |
| 19 | 4 | **展务筹备** |  | 40d | 2026-05-11 | 2026-07-03 |  | 0d |  | 展务经理 | 1744h | 103,260 |
| 20 | 4.1 | 场馆租赁与报批 | milestone | 10d | 2026-05-11 | 2026-05-22 | 5FF | 30d |  | 展务经理; 场馆对接人; 法务顾问 | 240h | 14,500 |
| 21 | 4.2 | 展馆布局与动线设计 |  | 8d | 2026-06-24 | 2026-07-03 | 10FF, 20FF | 0d |  | 设计总监; 3D设计师 | 128h | 10,400 |
| 22 | 4.3 | 特装展位设计搭建 | milestone | 15d | 2026-06-15 | 2026-07-03 | 21FF | 0d |  | 搭建施工队长; 木工; 电工; 美工 | 480h | 24,000 |
| 23 | 4.4 | 标准展位搭建 |  | 8d | 2026-06-24 | 2026-07-03 | 21FF | 0d |  | 搭建施工队长; 木工; 搬运工 | 192h | 9,440 |
| 24 | 4.5 | 公共区域与氛围布置 |  | 6d | 2026-06-26 | 2026-07-03 | 22FF | 0d |  | 美工; 平面设计师; 保洁人员 | 144h | 6,120 |
| 25 | 4.6 | 展品运输与仓储 |  | 10d | 2026-06-22 | 2026-07-03 | 21FF | 0d |  | 搬运工; 叉车司机; 展务经理 | 240h | 12,800 |

| ID | WBS | Task | Type | Duration | Start | Finish | Predecessors | Total slack | Free slack | Resources | Work | Cost |
| --- | --- | --- | --- | --- | --- | --- | --- | --- | --- | --- | --- | --- |
| 26 | 5 | **同期活动组织** |  | 30d | 2026-05-11 | 2026-06-19 |  | 10d |  | 活动策划专员 | 1208h | 83,190 |
| 27 | 5.1 | 开幕式策划 | milestone | 8d | 2026-05-13 | 2026-05-22 | 5FF | 30d | 2d | 活动策划专员; 张薇 | 128h | 11,040 |
| 28 | 5.2 | 高峰论坛组织 |  | 15d | 2026-05-11 | 2026-05-29 | 27FF | 25d | 0d | 活动策划专员; 主持与礼仪; 媒体公关专员 | 360h | 22,950 |
| 29 | 5.3 | 技术交流会组织 |  | 12d | 2026-05-11 | 2026-05-26 | 27FF | 28d |  | 活动策划专员; 刘洋 | 192h | 15,960 |
| 30 | 5.4 | 供需对接会组织 |  | 10d | 2026-06-08 | 2026-06-19 | 14FF | 10d |  | 招商经理; 观众组织专员 | 160h | 11,000 |
| 31 | 5.5 | 颁奖典礼策划 |  | 8d | 2026-05-20 | 2026-05-29 | 28FF | 25d |  | 活动策划专员; 主持与礼仪 | 128h | 7,840 |
| 32 | 6 | **现场运营** |  | 6d | 2026-06-26 | 2026-07-03 |  | 0d |  | 现场运营主管 | 632h | 33,350 |
| 33 | 6.1 | 布展与现场验收 | milestone | 6d | 2026-06-26 | 2026-07-03 | 22FF, 23FF, 24FF, 25FF | 0d |  | 展务经理; 现场运营主管; 场馆对接人 | 144h | 7,500 |
| 34 | 6.2 | 嘉宾接待与注册 |  | 5d | 2026-06-29 | 2026-07-03 | 33FF | 0d |  | 注册接待人员; 主持与礼仪; 志愿者 | 120h | 4,750 |
| 35 | 6.3 | 现场安保与秩序维护 |  | 5d | 2026-06-29 | 2026-07-03 | 33FF | 0d |  | 安保人员; 现场运营主管 | 80h | 4,500 |
| 36 | 6.4 | 展期服务与应急处理 | milestone | 5d | 2026-06-29 | 2026-07-03 | 34FF, 35FF | 0d |  | 现场运营主管; 志愿者; 保洁人员 | 120h | 4,750 |
| 37 | 6.5 | 媒体宣传与直播 |  | 5d | 2026-06-29 | 2026-07-03 | 33FF | 0d |  | 媒体公关专员; 摄影摄像师; 直播技术员 | 120h | 8,250 |
| 38 | 7 | **收尾与评估** |  | 10d | 2026-06-22 | 2026-07-03 |  | 0d |  | 张薇 | 728h | 60,090 |
| 39 | 7.1 | 撤展与场地恢复 | milestone | 5d | 2026-06-29 | 2026-07-03 | 36FF | 0d |  | 搭建施工队长; 搬运工; 保洁人员 | 120h | 5,150 |
| 40 | 7.2 | 财务结算 |  | 10d | 2026-06-22 | 2026-07-03 | 39FF | 0d |  | 财务专员; 张薇 | 160h | 14,500 |
| 41 | 7.3 | 数据统计与效果评估 |  | 8d | 2026-06-24 | 2026-07-03 | 39FF | 0d |  | 观众组织专员; 市场推广专员 | 128h | 7,440 |
| 42 | 7.4 | 客户回访与总结 | milestone | 10d | 2026-06-22 | 2026-07-03 | 40FF, 41FF | 0d |  | 招商经理; 张薇; 刘洋 | 240h | 24,000 |
